# Planning_Project

How a schedule from MS Project changed from version to version. A marks actual dates.

## Version 1 (saved 2014-09-15, file Planning_Project.mpp)

Note of the change: Planning en gitignore toegevoegd

| ID | WBS | Task | Duration | Start | Finish | Predecessors | Complete | Total float | Constraint |
| --- | --- | --- | --- | --- | --- | --- | --- | --- | --- |
| 1 | 1 | **Inception Phase** | 3.88d | 2014-09-08 13:20 A | 2014-09-19 10:40 |  | 59% | 3.29d |  |
| 2 |  | Interview voorbereiden | 7h | 2014-09-08 13:20 A | 2014-09-10 17:00 A |  | 100% |  | finish no earlier than 2014-09-10 17:00 |
| 3 |  | Intervies houden (2x Engels) | 2h | 2014-09-10 08:00 A | 2014-09-11 10:40 A | 2 | 100% |  |  |
| 4 |  | Gespreksverslagen terugkoppelen | 2h | 2014-09-12 08:40 | 2014-09-12 11:00 | 2, 3 |  | 5.54d | start no earlier than 2014-09-12 08:00 |
| 5 |  | Hernieuwde opdracht | 11.33h | 2014-09-12 08:00 A | 2014-09-15 17:00 A | 4 | 100% |  |  |
| 6 |  | Prototype van schermen | 7h | 2014-09-15 08:00 A | 2014-09-17 17:00 A | 5 | 100% |  | finish no earlier than 2014-09-17 17:00 |
| 7 |  | Offerte uitbregen | 7h | 2014-09-17 13:20 | 2014-09-18 12:20 | 5 |  | 3.54d | start no earlier than 2014-09-17 08:00 |
| 8 |  | Vergadering met agenda en notulen | 1h | 2014-09-18 08:40 | 2014-09-18 09:40 |  |  | 3.83d | start no earlier than 2014-09-18 08:00 |
| 9 |  | Plan van aanpak, inclusief risicoanalyse (Engels) | 11.33h | 2014-09-12 08:00 A | 2014-09-18 10:40 | 5 | 50% | 3.75d |  |
| 10 |  | Globale planning voor het gehele project | 2h | 2014-09-15 13:20 A | 2014-09-15 15:40 A |  | 100% |  | start no earlier than 2014-09-15 08:00 |
| 11 |  | Functioneel ontwerp inclusief taakverdeling in MS-Project (Engels) | 1h | 2014-09-17 13:20 | 2014-09-17 14:20 |  |  | 3.29d | start no earlier than 2014-09-17 08:00 |
| 12 |  | Use-Case Diagrammen | 2h | 2014-09-17 14:20 | 2014-09-17 16:40 | 11 |  | 3.29d | start no earlier than 2014-09-17 08:00 |
| 13 |  | Use-case templates | 2h | 2014-09-17 16:40 | 2014-09-18 10:00 | 11, 12 |  | 3.29d | start no earlier than 2014-09-17 08:00 |
| 14 |  | Activiteitendiagrammen | 4h | 2014-09-18 10:20 | 2014-09-19 10:40 | 13 |  | 3.29d | start no earlier than 2014-09-18 08:00 |
| 15 | 2 | **Elaboration Phase** | 2.25d | 2014-09-22 13:20 | 2014-09-26 17:00 | 1 |  | 2.46d |  |
| 16 |  | Technisch Ontwerp inclusief taakverdeling in MS-Project (Engels) | 2h | 2014-09-22 13:20 | 2014-09-22 15:40 |  |  | 2.58d | start no earlier than 2014-09-22 08:00 |
| 17 |  | Modeldictionary | 2h | 2014-09-22 15:40 | 2014-09-24 13:40 | 16 |  | 2.58d | start no earlier than 2014-09-22 08:00 |
| 18 |  | Klassendiagram | 3h | 2014-09-24 13:40 | 2014-09-24 17:00 | 17 |  | 2.58d | finish no earlier than 2014-09-24 17:00 |
| 19 |  | Datadictionary | 3h | 2014-09-24 17:00 | 2014-09-25 11:40 | 18 |  | 2.58d | finish no earlier than 2014-09-24 17:00 |
| 20 |  | Sequentiediagrammen | 2h | 2014-09-25 11:40 | 2014-09-26 09:40 | 19 |  | 2.58d | finish no earlier than 2014-09-25 17:00 |
| 21 |  | Taakverdeling ontwikkelomgeving | 2h | 2014-09-26 09:40 | 2014-09-26 12:00 | 20 |  | 2.58d | start no earlier than 2014-09-25 08:00 |
| 22 |  | Hard- en software van de ingerichte ontwikkelomgeving | 3h | 2014-09-26 13:40 | 2014-09-26 17:00 | 21 |  | 2.46d | finish no earlier than 2014-09-26 17:00 |
| 23 | 3 | **Construction Phase** | 8.79d | 2014-09-29 16:40 | 2014-10-31 17:20 | 15 |  | 2d |  |
| 24 |  | Het genormaliseerde databaseontwerp | 4h | 2014-09-29 16:40 | 2014-10-01 17:00 |  |  | 2.04d | finish no earlier than 2014-10-01 17:00 |
| 25 |  | De database (gebouwd) | 4h | 2014-10-01 17:00 | 2014-10-02 17:00 | 24 |  | 2.04d | finish no earlier than 2014-10-02 17:00 |
| 26 |  | Werkende solution | 51h | 2014-10-03 08:40 | 2014-10-29 17:00 | 25 |  | 2.04d | finish no earlier than 2014-10-29 17:00 |
| 27 |  | Functioneel-technische acceptatietest maken | 4h | 2014-10-30 08:40 | 2014-10-31 09:00 | 26 |  | 2d | start no earlier than 2014-10-30 08:00 |
| 28 |  | Functioneel-technische acceptatietest uitvoeren | 7h | 2014-10-31 09:00 | 2014-10-31 17:20 | 27 |  | 2d | finish no earlier than 2014-10-31 17:00 |
| 29 | 4 | **Transition Phase** | 2.25d | 2014-11-03 13:20 | 2014-11-07 17:00 | 23 |  | 0d |  |
| 30 |  | Een volledig werken systeem. Gerapporteerde bugs zijn opgelost. | 2h | 2014-11-03 13:20 | 2014-11-03 15:40 |  |  | 2d | start no earlier than 2014-11-03 08:00 |
| 31 |  | Gebruikershandleiding (Engels) | 2h | 2014-11-05 14:40 | 2014-11-05 17:00 |  |  | 1.38d | finish no earlier than 2014-11-05 17:00 |
| 32 |  | Projectrapport ( = alle documentatie op volgorde; inclusief notulen) | 2h | 2014-11-05 14:40 | 2014-11-05 17:00 |  |  | 1.38d | finish no earlier than 2014-11-05 17:00 |
| 33 |  | Teamrapport ( = groeps- en individuele reflectie ) | 2h | 2014-11-05 14:40 | 2014-11-05 17:00 |  |  | 1.38d | finish no earlier than 2014-11-05 17:00 |
| 34 |  | Presentatie (in het engels) | 1h | 2014-11-07 16:00 | 2014-11-07 17:00 |  |  | 0d | finish no earlier than 2014-11-07 17:00 |
| 35 |  | Logboek Voortgangsbewaking en Samenwerking | 1h | 2014-11-03 13:20 | 2014-11-03 14:20 |  |  | 2.12d | start no earlier than 2014-11-03 08:00 |

## Version 2 (saved 2014-09-15, file Planning_Project.mpp)

Note of the change: Brief agenda en planning aangepast

Last finish stays 2014-11-07. Complete tasks 5 → 4.

Changed:

| ID | Task | Start | Finish | Complete | Total float | Other |
| --- | --- | --- | --- | --- | --- | --- |
| 1 | **Inception Phase** |  |  | 59% → 58% |  |  |
| 2 | Interview voorbereiden |  |  |  |  | resources Marco Havermans; Pieter Hoek; Kevin Ly → none |
| 3 | Intervies houden (2x Engels) |  |  |  |  | resources Kevin Ly; Marco Havermans; Pieter Hoek → none |
| 4 | Gespreksverslagen terugkoppelen |  |  |  | 5.54d → 1.08d | resources Kevin Ly; Marco Havermans; Pieter Hoek → none |
| 5 | Hernieuwde opdracht |  | 2014-09-15 17:00 A → 2014-09-17 13:40 (+2d) | 100% → 94% | none → 0d | resources Marco Havermans; Pieter Hoek → none |
| 6 | Prototype van schermen |  |  |  |  | resources Pieter Hoek → none |
| 7 | Offerte uitbregen | 2014-09-17 13:20 → 2014-09-17 13:40 | 2014-09-18 12:20 → 2014-09-18 12:40 |  | 3.54d → 3.5d | resources Kevin Ly → none |
| 8 | Vergadering met agenda en notulen |  |  |  |  | resources Kevin Ly; Marco Havermans; Pieter Hoek → none |
| 9 | Plan van aanpak, inclusief risicoanalyse (Engels) |  | 2014-09-18 10:40 → 2014-09-18 11:20 |  | 3.75d → 3.67d | resources Kevin Ly → none |
| 10 | Globale planning voor het gehele project |  |  |  |  | resources Marco Havermans → none |
| 11 | Functioneel ontwerp inclusief taakverdeling in MS-Project (Engels) |  |  |  |  | resources Marco Havermans → none |
| 12 | Use-Case Diagrammen |  |  |  |  | resources Kevin Ly; Marco Havermans; Pieter Hoek → none |
| 13 | Use-case templates |  |  |  |  | resources Kevin Ly; Marco Havermans; Pieter Hoek → none |
| 14 | Activiteitendiagrammen |  |  |  |  | resources Kevin Ly; Marco Havermans; Pieter Hoek → none |
| 16 | Technisch Ontwerp inclusief taakverdeling in MS-Project (Engels) |  |  |  |  | resources Kevin Ly; Marco Havermans; Pieter Hoek → none |
| 17 | Modeldictionary |  |  |  |  | resources Kevin Ly; Marco Havermans; Pieter Hoek → none |
| 18 | Klassendiagram |  |  |  |  | resources Kevin Ly; Marco Havermans; Pieter Hoek → none |
| 19 | Datadictionary |  |  |  |  | resources Kevin Ly; Marco Havermans; Pieter Hoek → none |
| 20 | Sequentiediagrammen |  |  |  |  | resources Kevin Ly; Marco Havermans; Pieter Hoek → none |
| 21 | Taakverdeling ontwikkelomgeving |  |  |  |  | resources Kevin Ly; Marco Havermans; Pieter Hoek → none |
| 22 | Hard- en software van de ingerichte ontwikkelomgeving |  |  |  |  | resources Kevin Ly; Marco Havermans; Pieter Hoek → none |
| 24 | Het genormaliseerde databaseontwerp |  |  |  |  | resources Kevin Ly; Marco Havermans; Pieter Hoek → none |
| 25 | De database (gebouwd) |  |  |  |  | resources Kevin Ly; Marco Havermans; Pieter Hoek → none |
| 26 | Werkende solution |  |  |  |  | resources Kevin Ly; Marco Havermans; Pieter Hoek → none |
| 27 | Functioneel-technische acceptatietest maken |  |  |  |  | resources Marco Havermans; Pieter Hoek → none |
| 28 | Functioneel-technische acceptatietest uitvoeren |  |  |  |  | resources Kevin Ly; Marco Havermans → none |
| 30 | Een volledig werken systeem. Gerapporteerde bugs zijn opgelost. |  |  |  |  | resources Kevin Ly; Marco Havermans; Pieter Hoek → none |
| 31 | Gebruikershandleiding (Engels) |  |  |  |  | resources Kevin Ly; Marco Havermans; Pieter Hoek → none |
| 32 | Projectrapport ( = alle documentatie op volgorde; inclusief notulen) |  |  |  |  | resources Kevin Ly; Marco Havermans; Pieter Hoek → none |
| 33 | Teamrapport ( = groeps- en individuele reflectie ) |  |  |  |  | resources Kevin Ly; Marco Havermans; Pieter Hoek → none |
| 34 | Presentatie (in het engels) |  |  |  |  | resources Kevin Ly; Marco Havermans; Pieter Hoek → none |
| 35 | Logboek Voortgangsbewaking en Samenwerking |  |  |  |  | resources Kevin Ly; Marco Havermans; Pieter Hoek → none |

## Version 3 (saved 2014-09-15, file Planning_Project.mpp)

Note of the change: Merge branch 'master' of https://github.com/Aplicticus/Project_P5

Last finish stays 2014-11-07. Complete tasks 4 → 6.

Changed:

| ID | Task | Start | Finish | Duration | Complete | Total float | Predecessors | Other |
| --- | --- | --- | --- | --- | --- | --- | --- | --- |
| 1 | **Inception Phase** |  | 2014-09-19 10:40 → 2014-09-18 10:00 (-1d) | 3.88d → 3.38d | 58% → 57% | 3.29d → 5.04d |  |  |
| 2 | Interview voorbereiden |  |  | 7h → 3h |  |  |  |  |
| 4 | Gespreksverslagen terugkoppelen |  | 2014-09-12 11:00 → 2014-09-12 12:00 | 2h → 3h |  | 1.08d → 5.67d |  |  |
| 5 | Hernieuwde opdracht |  | 2014-09-17 13:40 → 2014-09-15 17:00 A (-2d) | 11.33h → 4h | 94% → 100% | 0d → none |  | constraint none → finish no earlier than 2014-09-15 17:00 |
| 6 | Prototype van schermen |  |  | 7h → 3h |  |  |  |  |
| 7 | Offerte uitbregen | 2014-09-17 13:40 → 2014-09-17 13:20 | 2014-09-18 12:40 → 2014-09-18 09:00 | 7h → 4h |  | 3.5d → 4.17d |  |  |
| 9 | Plan van aanpak, inclusief risicoanalyse (Engels) |  | 2014-09-18 11:20 → 2014-09-15 17:00 A (-3d) | 11.33h → 3h | 50% → 100% | 3.67d → none |  | constraint none → finish no earlier than 2014-09-15 17:00 |
| 13 | Use-case templates |  | 2014-09-18 10:00 → 2014-09-18 09:00 | 2h → 1h |  | 3.29d → 4.04d |  |  |
| 14 | Activiteitendiagrammen | 2014-09-18 10:20 → 2014-09-18 09:00 | 2014-09-19 10:40 → 2014-09-18 10:00 (-1d) | 4h → 1h |  | 3.29d → 4.04d |  |  |
| 18 | Klassendiagram | 2014-09-24 13:40 → 2014-09-24 14:40 |  | 3h → 2h |  | 2.58d → 3.96d |  |  |
| 22 | Hard- en software van de ingerichte ontwikkelomgeving | 2014-09-26 13:40 → 2014-09-26 14:40 |  | 3h → 2h |  | 2.46d → 3.71d |  |  |
| 23 | **Construction Phase** | 2014-09-29 16:40 → 2014-10-01 14:40 (+2d) | 2014-10-31 17:20 → 2014-10-31 17:00 | 8.79d → 8.5d |  | 2d → 1.79d |  |  |
| 24 | Het genormaliseerde databaseontwerp | 2014-09-29 16:40 → 2014-10-01 14:40 (+2d) |  | 4h → 2h |  | 2.04d → 2.79d |  |  |
| 25 | De database (gebouwd) | 2014-10-01 17:00 → 2014-10-02 09:20 (+1d) |  | 4h → 3h |  | 2.04d → 2.67d |  |  |
| 26 | Werkende solution | 2014-10-03 08:40 → 2014-10-03 09:40 |  | 51h → 50h |  | 2.04d → 2.54d |  |  |
| 27 | Functioneel-technische acceptatietest maken |  | 2014-10-31 09:00 → 2014-10-30 11:00 (-1d) | 4h → 2h |  | 2d → 2.5d |  |  |
| 28 | Functioneel-technische acceptatietest uitvoeren | 2014-10-31 09:00 → 2014-10-31 13:40 | 2014-10-31 17:20 → 2014-10-31 17:00 | 7h → 3h |  | 2d → 1.79d |  |  |
| 30 | Een volledig werken systeem. Gerapporteerde bugs zijn opgelost. |  | 2014-11-03 15:40 → 2014-11-03 16:40 | 2h → 3h |  | 2d → 1.88d | none → 23 |  |
| 31 | Gebruikershandleiding (Engels) | 2014-11-05 14:40 → 2014-11-05 13:40 |  | 2h → 3h |  |  | none → 23 |  |
| 32 | Projectrapport ( = alle documentatie op volgorde; inclusief notulen) |  |  |  |  |  | none → 23 |  |
| 33 | Teamrapport ( = groeps- en individuele reflectie ) |  |  |  |  |  | none → 23 |  |
| 34 | Presentatie (in het engels) maken | 2014-11-07 16:00 → 2014-11-07 12:00 |  | 1h → 4h |  |  | none → 23 | was named Presentatie (in het engels) |
| 35 | Logboek Voortgangsbewaking en Samenwerking |  |  |  |  |  | none → 23 |  |

## Version 4 (saved 2014-09-17, file Planning_Project.mpp)

Note of the change: Planning aangepast

Last finish stays 2014-11-07. Complete tasks 6 → 5.

Changed:

| ID | Task | Start | Finish | Duration | Complete | Total float | Predecessors | Other |
| --- | --- | --- | --- | --- | --- | --- | --- | --- |
| 1 | **Inception Phase** | 2014-09-08 13:20 A → 2014-09-08 08:00 A | 2014-09-18 10:00 → 2014-09-19 17:00 (+1d) | 3.38d → 4.54d | 57% → 56% | 5.04d → 0d |  |  |
| 2 | Interview voorbereiden | 2014-09-08 13:20 A → 2014-09-08 08:00 A | 2014-09-10 17:00 A → 2014-09-08 16:40 A (-2d) |  |  |  |  | constraint finish no earlier than 2014-09-10 17:00 → must start on 2014-09-08 08:00; resources none → Kevin Ly; Marco Havermans; Pieter Hoek |
| 3 | Intervies houden (2x Engels) | 2014-09-10 08:00 A → 2014-09-08 18:00 A (-2d) | 2014-09-11 10:40 A → 2014-09-10 15:40 A (-1d) |  |  |  |  | constraint none → must start on 2014-09-08 08:00; resources none → Kevin Ly; Marco Havermans; Pieter Hoek |
| 4 | Gespreksverslagen terugkoppelen | 2014-09-12 08:40 → 2014-09-10 08:00 A (-2d) | 2014-09-12 12:00 → 2014-09-10 16:40 A (-2d) |  | 0% → 100% | 5.67d → none | 2, 3 → 3 | constraint start no earlier than 2014-09-12 08:00 → must start on 2014-09-10 08:00; resources none → Kevin Ly; Marco Havermans; Pieter Hoek |
| 5 | Hernieuwde opdracht | 2014-09-12 08:00 A → 2014-09-12 15:00 A |  |  |  |  | 4 → 2, 3 | resources none → Marco Havermans; Pieter Hoek |
| 6 | Prototype van schermen |  | 2014-09-17 17:00 A → 2014-09-17 17:00 |  | 100% → 50% | none → 1.38d | 5 → 2, 3, 5 | resources none → Pieter Hoek |
| 7 | Offerte uitbregen |  |  |  |  | 4.17d → 1.29d | 5 → 2, 3, 5 | resources none → Marco Havermans |
| 8 | Vergadering met agenda en notulen |  |  |  |  | 4.08d → 1.21d |  | resources none → Kevin Ly; Marco Havermans; Pieter Hoek |
| 9 | Plan van aanpak, inclusief risicoanalyse (Engels) |  | 2014-09-15 17:00 A → 2014-09-17 14:48 (+2d) |  | 100% → 40% | none → 1.61d | 5 → 5, 10 | resources none → Kevin Ly |
| 10 | Globale planning voor het gehele project | 2014-09-15 13:20 A → 2014-09-15 08:00 A |  |  |  |  |  | resources none → Marco Havermans |
| 11 | Functioneel ontwerp inclusief taakverdeling in MS-Project (Engels) |  |  |  |  | 4.04d → 1.42d | none → 10, 5, 2, 3 | resources none → Pieter Hoek |
| 12 | Use-Case Diagrammen |  |  |  |  | 4.04d → 1.42d |  | resources none → Kevin Ly; Marco Havermans; Pieter Hoek |
| 13 | Use-case templates | 2014-09-17 16:40 → 2014-09-17 14:20 | 2014-09-18 09:00 → 2014-09-17 15:40 (-1d) |  |  | 4.04d → 1.54d | 11, 12 → 11 | resources none → Kevin Ly; Marco Havermans; Pieter Hoek |
| 14 | Activiteitendiagrammen | 2014-09-18 09:00 → 2014-09-19 16:00 (+1d) | 2014-09-18 10:00 → 2014-09-19 17:00 (+1d) |  |  | 4.04d → 0d | 13 → 11 | constraint start no earlier than 2014-09-18 08:00 → finish no earlier than 2014-09-19 17:00; resources none → Kevin Ly; Marco Havermans; Pieter Hoek |
| 16 | Technisch Ontwerp inclusief taakverdeling in MS-Project (Engels) |  |  |  |  | 4.08d → 1.62d | none → 14 | resources none → Pieter Hoek |
| 17 | Modeldictionary |  |  |  |  | 4.08d → 1.75d |  | resources none → Marco Havermans |
| 18 | Klassendiagram |  |  |  |  | 3.96d → 1.38d | 17 → 16 | resources none → Kevin Ly |
| 19 | Datadictionary | 2014-09-24 17:00 → 2014-09-24 13:40 | 2014-09-25 11:40 → 2014-09-24 17:00 (-1d) |  |  | 3.96d → 1.38d | 18 → 16 | resources none → Pieter Hoek |
| 20 | Sequentiediagrammen | 2014-09-25 11:40 → 2014-09-25 10:40 | 2014-09-26 09:40 → 2014-09-25 17:00 (-1d) |  |  | 3.96d → 0.88d | 19 → 16 | resources none → Kevin Ly |
| 21 | Taakverdeling ontwikkelomgeving | 2014-09-26 09:40 → 2014-09-25 08:40 (-1d) | 2014-09-26 12:00 → 2014-09-25 11:00 (-1d) |  |  | 3.96d → 1.08d | 20 → 16 | resources none → Marco Havermans |
| 22 | Hard- en software van de ingerichte ontwikkelomgeving |  |  |  |  | 3.71d → 0d | 21 → 16 | resources none → Pieter Hoek |
| 23 | **Construction Phase** | 2014-10-01 14:40 → 2014-09-29 13:20 (-2d) |  | 8.5d → 9.12d |  | 1.79d → 0d |  |  |
| 24 | Het genormaliseerde databaseontwerp | 2014-10-01 14:40 → 2014-09-29 13:20 (-2d) | 2014-10-01 17:00 → 2014-09-29 15:40 (-2d) |  |  | 2.79d → 1.62d | none → 22 | constraint finish no earlier than 2014-10-01 17:00 → start no earlier than 2014-09-29 08:00; resources none → Kevin Ly |
| 25 | De database (gebouwd) |  |  |  |  | 2.67d → 0.88d |  | resources none → Pieter Hoek |
| 26 | Werkende solution |  |  |  |  | 2.54d → 0.75d |  | resources none → Kevin Ly; Marco Havermans; Pieter Hoek |
| 27 | Functioneel-technische acceptatietest maken |  |  |  |  | 2.5d → 0.71d |  | resources none → Kevin Ly; Marco Havermans; Pieter Hoek |
| 28 | Functioneel-technische acceptatietest uitvoeren |  |  |  |  | 1.79d → 0d | 27 → 26, 27 | resources none → Kevin Ly; Marco Havermans; Pieter Hoek |
| 30 | Een volledig werken systeem. Gerapporteerde bugs zijn opgelost. |  |  |  |  | 1.88d → 1.25d | 23 → 28, 26 | resources none → Kevin Ly; Marco Havermans; Pieter Hoek |
| 31 | Gebruikershandleiding (Engels) |  |  |  |  | 1.38d → 1.12d | 23 → 30 | resources none → Kevin Ly; Marco Havermans; Pieter Hoek |
| 32 | Projectrapport ( = alle documentatie op volgorde; inclusief notulen) |  |  |  |  | 1.38d → 1.12d | 23 → 1, 15, 23 | resources none → Kevin Ly; Marco Havermans; Pieter Hoek |
| 33 | Teamrapport ( = groeps- en individuele reflectie ) | 2014-11-05 14:40 → 2014-11-05 17:00 | 2014-11-05 17:00 → 2014-11-06 10:40 (+1d) |  |  | 1.38d → 1.12d | 23 → 30, 31, 32 | resources none → Kevin Ly; Marco Havermans; Pieter Hoek |
| 34 | Presentatie (in het engels) maken |  |  |  |  |  | 23 → 30 | resources none → Kevin Ly; Marco Havermans; Pieter Hoek |
| 35 | Logboek Voortgangsbewaking en Samenwerking |  |  |  |  |  | 23 → none | resources none → Kevin Ly; Marco Havermans; Pieter Hoek |
